# VistaGeneralProjectPlan

Schedule from MS Project, 2011-05-20 to 2011-08-22, status date 2011-05-20, A marks actual dates.
Grizli777

## Calendars

- Standard: Mon-Fri 08:00-12:00, 13:00-17:00; Sat-Sun off.

## Resources

| Resource |
| --- |
| VladL |
| ArturR |
| VladS |
| EliaK |
| MichaelL |
| VadimS |

## Schedule

| ID | WBS | Task | Duration | Start | Finish | Predecessors | Complete | Remaining | Total slack | Free slack | Resources | Work |
| --- | --- | --- | --- | --- | --- | --- | --- | --- | --- | --- | --- | --- |
| 1 | 1 | **VISTA** | 67d? | 2011-05-20 A | 2011-08-22 |  |  | 66.75d? | 0d |  |  | 1208h |
| 2 | 1.1 | **UI** | 67d? | 2011-05-20 A | 2011-08-22 |  |  | 66.71d? | 0d |  |  | 1080h |
| 3 | 1.1.1 | **CRM** | 67d? | 2011-05-20 A | 2011-08-22 |  | 1% | 66.57d? | 0d |  |  | 808h |
| 4 | 1.1.1.1 | **UI Framework Components and Functionality** | 1d | 2011-06-15 | 2011-06-15 |  |  |  | 48d |  |  |  |
| 5 | 1.1.1.1.1 | Lister Header - sorting, column selector | 1d | 2011-06-15 | 2011-06-15 |  |  |  | 48d |  |  |  |
| 6 | 1.1.1.1.2 | Search Filters | 1d | 2011-06-15 | 2011-06-15 |  |  |  | 48d |  |  |  |
| 7 | 1.1.1.1.3 | Global Search | 1d | 2011-06-15 | 2011-06-15 |  |  |  | 48d |  |  |  |
| 8 | 1.1.1.1.4 | Rich Text Editor component with image upload and filters | 1d | 2011-06-15 | 2011-06-15 |  |  |  | 48d |  |  |  |
| 9 | 1.1.1.2 | **Dashboard/Report** | 1d | 2011-06-15 | 2011-06-15 |  |  |  | 48d |  |  |  |
| 10 | 1.1.1.2.1 | **Gadgets** | 1d | 2011-06-15 | 2011-06-15 |  |  |  | 48d |  |  |  |
| 11 | 1.1.1.2.1.1 | Lister | 1d | 2011-06-15 | 2011-06-15 |  |  |  | 48d |  |  |  |
| 12 | 1.1.1.2.1.2 | Pie Chart | 1d | 2011-06-15 | 2011-06-15 |  |  |  | 48d |  |  |  |
| 13 | 1.1.1.2.1.3 | Bar Chart | 1d | 2011-06-15 | 2011-06-15 |  |  |  | 48d |  |  |  |
| 14 | 1.1.1.2.1.4 | Line Chart | 1d | 2011-06-15 | 2011-06-15 |  |  |  | 48d |  |  |  |
| 15 | 1.1.1.2.1.5 | Notifications Gadget | 1d | 2011-06-15 | 2011-06-15 |  |  |  | 48d |  |  |  |
| 16 | 1.1.1.2.1.6 | Alerts Gadget | 1d | 2011-06-15 | 2011-06-15 |  |  |  | 48d |  |  |  |
| 17 | 1.1.1.3 | **Print Out/PDF generation** | 1d | 2011-06-15 | 2011-06-15 |  |  |  | 48d |  |  |  |
| 18 | 1.1.1.3.1 | Building | 1d | 2011-06-15 | 2011-06-15 |  |  |  | 48d |  |  |  |
| 19 | 1.1.1.3.2 | Unit | 1d | 2011-06-15 | 2011-06-15 |  |  |  | 48d |  |  |  |
| 20 | 1.1.1.3.3 | Tenant | 1d | 2011-06-15 | 2011-06-15 |  |  |  | 48d |  |  |  |
| 21 | 1.1.1.3.4 | Lease | 1d | 2011-06-15 | 2011-06-15 |  |  |  | 48d |  |  |  |
| 22 | 1.1.1.3.5 | Application | 1d | 2011-06-15 | 2011-06-15 |  |  |  | 48d |  |  |  |
| 23 | 1.1.1.4 | **Business Domain (Lister, Search Criteria, Viewer, Editor)** | 25d? | 2011-06-15 | 2011-07-19 |  |  |  | 22d |  |  | 192h |
| 24 | 1.1.1.4.1 | Building | 2d | 2011-06-27 | 2011-06-28 |  |  |  | 39d |  | VladL | 16h |
| 25 | 1.1.1.4.2 | Parking | 2d | 2011-06-27 | 2011-06-28 |  |  |  | 39d |  | VladL | 16h |
| 26 | 1.1.1.4.3 | Parking Spot | 2d | 2011-06-29 | 2011-06-30 |  |  |  | 37d |  | VladL | 16h |
| 27 | 1.1.1.4.4 | Locker Area | 2d | 2011-07-04 | 2011-07-05 |  |  |  | 34d |  | VladL | 16h |
| 28 | 1.1.1.4.5 | Locker | 2d | 2011-07-05 | 2011-07-06 |  |  |  | 33d |  | VladL | 16h |
| 29 | 1.1.1.4.6 | Unit | 2d | 2011-07-18 | 2011-07-19 |  |  |  | 24d |  | VladL | 16h |
| 30 | 1.1.1.4.7 | Tenant | 2d | 2011-07-11 | 2011-07-12 |  |  |  | 29d |  | VladL | 16h |
| 31 | 1.1.1.4.8 | Lease | 2d | 2011-06-15 | 2011-06-16 |  |  |  | 22d | 0d | VladL | 16h |
| 32 | 1.1.1.4.9 | Application | 4d | 2011-06-17 | 2011-06-22 | 31 |  |  | 22d | 0d | VladL | 32h |
| 33 | 1.1.1.4.10 | Addendum | 2d? | 2011-07-18 | 2011-07-19 |  |  |  | 24d |  | VladL | 16h |
| 34 | 1.1.1.4.11 | Concession | 2d | 2011-07-18 | 2011-07-19 |  |  |  | 24d |  | VladL | 16h |
| 35 | 1.1.1.4.12 | Portfolio | 1d? | 2011-07-18 | 2011-07-18 |  |  |  | 25d |  |  |  |
| 36 | 1.1.1.4.13 | Compex | 1d? | 2011-07-18 | 2011-07-18 |  |  |  | 25d |  |  |  |
| 37 | 1.1.1.4.14 | Ownership Group | 1d? | 2011-07-18 | 2011-07-18 |  |  |  | 25d |  |  |  |
| 38 | 1.1.1.4.15 | Employee | 1d? | 2011-07-18 | 2011-07-18 |  |  |  | 25d |  |  |  |

Notes:
- 25: This is a parking lot. We need to assign the cost of a parking spot, know how many spots are available in a given lot, as well as to have the list of all possible lot types and spot types.
- 26: We need to assign the parking spot to a unit. We will maintain the spot admin status as: assigned, available and operational status useready, down
- 27: This is a locker area. We need to assign the cost of a locker in this area, know how many lockers are available, as well as to have the list of all possible locker types.
- 28: We only need to assign cost for the locker and assign desired number of lockers to the lease so that the lease charges could be calculated correctly. We do not need to support parking management in beta
- 34: - Concessions must be approved / - available time interval (i.e. concession available for new applications within next 2 weeks) / - description (1 month free, 10% off, free TV, etc) / - conbcession value (cost of TV, actual cost of 1 month rent) / - rules on how to incorporate concession to the lease (free 13th month, or apply equal discounts to every month, etc)

| ID | WBS | Task | Duration | Start | Finish | Predecessors | Total slack | Resources | Work |
| --- | --- | --- | --- | --- | --- | --- | --- | --- | --- |
| 39 | 1.1.1.5 | **Business Processes** | 27d? | 2011-06-15 | 2011-07-21 |  | 22d |  | 240h |
| 40 | 1.1.1.5.1 | Application Approval | 4d | 2011-07-11 | 2011-07-21 | 32 | 22d | VladS; MichaelL | 32h |
| 41 | 1.1.1.5.2 | Move In | 4d | 2011-06-27 | 2011-07-07 |  | 32d | VladS; MichaelL | 32h |
| 42 | 1.1.1.5.3 | Notice | 4d | 2011-06-28 | 2011-07-08 |  | 31d | VladS; MichaelL | 32h |
| 43 | 1.1.1.5.4 | Move Out | 4d | 2011-07-04 | 2011-07-14 |  | 27d | VladS; MichaelL | 32h |
| 44 | 1.1.1.5.5 | Off Market Statuses | 4d | 2011-07-04 | 2011-07-14 |  | 27d | VladS; MichaelL | 32h |
| 45 | 1.1.1.5.6 | Parking/Storage Assignment | 4d | 2011-07-06 | 2011-07-18 |  | 25d | MichaelL; VladS | 32h |
| 46 | 1.1.1.5.7 | Resource Booking | 4d | 2011-07-11 | 2011-07-21 |  | 22d | MichaelL; VladS | 32h |
| 47 | 1.1.1.5.8 | Inquiry Management | 2d | 2011-06-15 | 2011-06-16 |  | 47d |  |  |
| 48 | 1.1.1.5.9 | Lease Application Management | 2d | 2011-06-15 | 2011-06-16 |  | 47d |  |  |
| 49 | 1.1.1.5.10 | Vacant Unit Scoping | 2d | 2011-06-15 | 2011-06-16 |  | 47d |  |  |
| 50 | 1.1.1.5.11 | Paymant Transaction Recording | 2d? | 2011-07-12 | 2011-07-21 |  | 22d | MichaelL; VladS | 16h |
| 51 | 1.1.1.6 | **PMC Admin Domain** | 2d? | 2011-06-15 | 2011-06-16 |  | 47d |  |  |
| 52 | 1.1.1.6.1 | PMC | 1d? | 2011-06-15 | 2011-06-15 |  | 48d |  |  |
| 53 | 1.1.1.6.2 | Role | 1d | 2011-06-15 | 2011-06-15 |  | 48d |  |  |
| 54 | 1.1.1.6.3 | User | 2d | 2011-06-15 | 2011-06-16 |  | 47d |  |  |
| 55 | 1.1.1.6.4 | Behaviour | 1d? | 2011-06-15 | 2011-06-15 |  | 48d |  |  |
| 56 | 1.1.1.6.5 | Policy | 1d? | 2011-06-15 | 2011-06-15 |  | 48d |  |  |
| 57 | 1.1.1.6.6 | CMS Page Descriptor | 1d? | 2011-06-15 | 2011-06-15 |  | 48d |  |  |
| 58 | 1.1.1.7 | **PMC Administration Processes** | 49d? | 2011-06-15 | 2011-08-22 |  | 0d |  | 376h |
| 59 | 1.1.1.7.1 | Details | 1d | 2011-06-15 | 2011-06-15 |  | 48d |  |  |
| 60 | 1.1.1.7.2 | PMC Settings | 1d? | 2011-06-15 | 2011-06-15 |  | 48d |  |  |
| 61 | 1.1.1.7.3 | Yardi Import Settings | 1d? | 2011-06-15 | 2011-06-15 |  | 48d |  |  |
| 62 | 1.1.1.7.4 | User Definition | 1d? | 2011-06-15 | 2011-06-15 |  | 48d |  |  |
| 63 | 1.1.1.7.5 | Role Definition | 1d? | 2011-06-15 | 2011-06-15 |  | 48d |  |  |
| 64 | 1.1.1.7.6 | Settings for Yardi payment gateway | 1d | 2011-06-15 | 2011-06-15 |  | 48d |  |  |

Notes:
- 40: http://propertyvista.jira.com/wiki/display/VISTA/PT+Approval+Process
- 46: Booking elevator, booking party room, booking pool (for example for birthday party), etc.
- 51: I suggest that for beta we do not support different roles. We will create one role that can do everything that is needed.
- 54: User of the system

| ID | WBS | Task | Duration | Start | Finish | Total slack | Resources | Work |
| --- | --- | --- | --- | --- | --- | --- | --- | --- |
| 65 | 1.1.1.7.7 | **CMS for Portal** | 1d | 2011-06-15 | 2011-06-15 | 48d |  |  |
| 66 | 1.1.1.7.7.1 | General Tenant Portal Properties | 1d | 2011-06-15 | 2011-06-15 | 48d |  |  |
| 67 | 1.1.1.7.8 | **Portal/CRM Branding** | 1d? | 2011-06-15 | 2011-06-15 | 48d |  |  |
| 68 | 1.1.1.7.8.1 | Style/Skin Editor | 1d | 2011-06-15 | 2011-06-15 | 48d |  |  |
| 69 | 1.1.1.7.8.2 | Page Descriptor and Site Map editing | 1d? | 2011-06-15 | 2011-06-15 | 48d |  |  |
| 70 | 1.1.1.7.9 | **Policy Management** | 49d? | 2011-06-15 | 2011-08-22 | 0d |  | 376h |
| 71 | 1.1.1.7.9.1 | Project Plan for Policies | 1d | 2011-06-15 | 2011-06-15 | 48d | ArturR | 8h |
| 72 | 1.1.1.7.9.2 | Policy Framework Design | 14d | 2011-06-20 | 2011-07-07 | 32d | ArturR | 112h |
| 73 | 1.1.1.7.9.3 | Policy related framework - navigate, list, search, duplicate, edit | 5d | 2011-06-15 | 2011-06-21 | 44d |  |  |
| 74 | 1.1.1.7.9.4 | **Reference Data and Settings** | 1d? | 2011-06-15 | 2011-06-15 | 48d |  |  |
| 75 | 1.1.1.7.9.4.1 | Currency | 1d? | 2011-06-15 | 2011-06-15 | 48d |  |  |
| 76 | 1.1.1.7.9.4.2 | Tenant document types | 1d? | 2011-06-15 | 2011-06-15 | 48d |  |  |
| 77 | 1.1.1.7.9.5 | **Lease Application** | 44d? | 2011-06-15 | 2011-08-15 | 5d |  | 232h |
| 78 | 1.1.1.7.9.5.1 | Identification documents | 1d? | 2011-08-01 | 2011-08-01 | 15d | ArturR | 8h |
| 79 | 1.1.1.7.9.5.2 | Proof documents | 1d? | 2011-06-15 | 2011-06-15 | 48d |  |  |
| 80 | 1.1.1.7.9.5.3 | Document Req After Submit | 1d? | 2011-08-02 | 2011-08-02 | 14d | ArturR | 8h |
| 81 | 1.1.1.7.9.5.4 | Employment Req | 1d? | 2011-08-03 | 2011-08-03 | 13d | ArturR | 8h |
| 82 | 1.1.1.7.9.5.5 | Residency Req | 1d? | 2011-08-08 | 2011-08-08 | 10d | ArturR | 8h |
| 83 | 1.1.1.7.9.5.6 | Guarantor Req | 1d? | 2011-08-08 | 2011-08-08 | 10d | ArturR | 8h |
| 84 | 1.1.1.7.9.5.7 | Equifax Preapproval Requirements | 2d | 2011-07-11 | 2011-07-12 | 29d | ArturR | 16h |
| 85 | 1.1.1.7.9.5.8 | Deposit Calculation Formula | 2d | 2011-07-12 | 2011-07-13 | 28d | ArturR | 16h |
| 86 | 1.1.1.7.9.5.9 | Security Deposit Formula | 1d? | 2011-06-15 | 2011-06-15 | 48d |  |  |
| 87 | 1.1.1.7.9.5.10 | Legal/Collections | 2d | 2011-07-18 | 2011-07-19 | 24d | ArturR | 16h |
| 88 | 1.1.1.7.9.5.11 | Late Fees | 2d | 2011-07-18 | 2011-07-19 | 24d | ArturR | 16h |
| 89 | 1.1.1.7.9.5.12 | Usage Fees | 2d | 2011-07-20 | 2011-07-21 | 22d | ArturR | 16h |
| 90 | 1.1.1.7.9.5.13 | Prorate | 2d | 2011-07-25 | 2011-07-26 | 19d | ArturR | 16h |
| 91 | 1.1.1.7.9.5.14 | Pets Charge | 2d | 2011-07-06 | 2011-07-07 | 32d | ArturR | 16h |
| 92 | 1.1.1.7.9.5.15 | Pet Type and Number | 2d | 2011-07-26 | 2011-07-27 | 18d | ArturR | 16h |
| 93 | 1.1.1.7.9.5.16 | Docs To Be Given To Tenant | 2d | 2011-08-01 | 2011-08-02 | 14d | ArturR | 16h |
| 94 | 1.1.1.7.9.5.17 | Devices | 1d? | 2011-08-08 | 2011-08-08 | 10d | ArturR | 8h |
| 95 | 1.1.1.7.9.5.18 | Accepted Payment Types | 1d? | 2011-08-09 | 2011-08-09 | 9d | ArturR | 8h |
| 96 | 1.1.1.7.9.5.19 | Limit Number of Tenants | 1d? | 2011-08-10 | 2011-08-10 | 8d | ArturR | 8h |
| 97 | 1.1.1.7.9.5.20 | Application Fee | 1d? | 2011-08-15 | 2011-08-15 | 5d | ArturR | 8h |
| 98 | 1.1.1.7.9.5.21 | Lease Term Formula | 1d? | 2011-08-15 | 2011-08-15 | 5d | ArturR | 8h |
| 99 | 1.1.1.7.9.5.22 | Lease Termination Period | 1d? | 2011-08-15 | 2011-08-15 | 5d | ArturR | 8h |

Notes:
- 78: Policy lists acceptable government documents: passport, driver licence, immigration paper. User can specify what he wants by adding new id types as strings in the form. These types will appear as drop down menu in the wizzard.
- 79: Policy lists required or optional proof documents: proof of income (T4, employee letter), proof of residence (utility bill), proof of asset (bank statement, bank letter). User can specify what he wants by adding new id types as strings in the form. These types will appear as drop down menu in the wizzard.
- 80: Policy specifies conditions for which additional documents are required to be provided. For example, at the certain level of income or assets, we may need to ask PT to provide additional source of income or proof of additional asset.
- 81: Policy specifies length of time for the employment history. For example, if this policy specifies 3 years and person 1st employment data shows he worked for 2 years, either warning will pop up to prompt the person to enter previous employment info.
- 82: Policy specifies length of time for the resident history. For example, if this policy specifies 3 years and person 1st place of residence shows he lived there for 2 years, warning will pop up to prompt the person to enter previous residence.
- 83: Specifies qualitative and quantitative conditions for which guarantor is required.
- 84: Policy secifies algorithm to preapprove PT. Here user should be able to specify a set of parameter values in equifax report sufficient to approve
- 85: Specifies first, last, or first and last month rent as deposit
- 86: Specify formula to calculate security deposit. Could be ammount of dollars or % of rent
- 87: Specifies all rules and procedures related to tenant breaking the regulations and rules. Tenant needs to accept the receipt of the content of this policy.
- 88: Policy will define what is late and any fines associated with late payments
- 89: If any amenity/utility has usage fees/deposit this policy will identify that.
- 90: Prorate policy identifies formula to calculate prorate rent.
- 91: Pet charge policy identifies pet fee or pet deposit. May specify different charges depending on pet size/weight.
- 92: Specifies allowed pets as well as their maximum numbers, for example 2 pets per unit, allowed dog, cat, bird
- 93: Policy defines list of documents to be given to tenant upon lease signing/ move in. Tenant has to sign that he received every document in the package
- 94: Tenant may need to be given a number of devices: access keys/cards, equipment, etc. that have deposit associated with them.
- 95: PM may accept only certain payment types.
- 96: Define maximum number of tenants for a unit type or per bedroom
- 97: Define the application fee
- 98: Formula for calculating rent for other lease terms (ex. 6 months, 9 months, 18 months)
- 99: Define the minimum length of time that a notice can be given. Usually 60 days.

| ID | WBS | Task | Duration | Start | Finish | Complete | Total slack | Resources | Work |
| --- | --- | --- | --- | --- | --- | --- | --- | --- | --- |
| 100 | 1.1.1.7.9.6 | **Post-approval and Tenancy** | 49d? | 2011-06-15 | 2011-08-22 |  | 0d |  | 24h |
| 101 | 1.1.1.7.9.6.1 | Change Accepted Payment Types | 1d? | 2011-08-16 | 2011-08-16 |  | 4d | ArturR | 8h |
| 102 | 1.1.1.7.9.6.2 | Tenant insurance requirements | 1d? | 2011-08-17 | 2011-08-17 |  | 3d | ArturR | 8h |
| 103 | 1.1.1.7.9.6.3 | Hydro requirements | 1d? | 2011-08-22 | 2011-08-22 |  | 0d | ArturR | 8h |
| 104 | 1.1.1.7.9.6.4 | Pre-move In Inspection Requirement | 1d? | 2011-06-15 | 2011-06-15 |  | 48d |  |  |
| 105 | 1.1.1.8 | **Profile** | 1d | 2011-06-15 | 2011-06-15 |  | 48d |  |  |
| 106 | 1.1.1.8.1 | Change Email, Password | 1d | 2011-06-15 | 2011-06-15 |  | 48d |  |  |
| 107 | 1.1.1.9 | **Preferences** | 1d | 2011-06-15 | 2011-06-15 |  | 48d |  |  |
| 108 | 1.1.1.9.1 | Notifications settings | 1d | 2011-06-15 | 2011-06-15 |  | 48d |  |  |
| 109 | 1.1.1.10 | Alerts/Notifications | 2d | 2011-06-15 | 2011-06-16 |  | 47d |  |  |
| 110 | 1.1.1.11 | Mails | 1d? | 2011-05-20 A | 2011-05-20 A | 100% |  |  |  |
| 111 | 1.1.2 | **Tenant Portal** | 11d? | 2011-06-15 | 2011-06-29 |  | 38d |  | 88h |
| 112 | 1.1.2.1 | **General Site Design** | 11d | 2011-06-15 | 2011-06-29 |  | 38d |  | 88h |
| 113 | 1.1.2.1.1 | Site Map | 2d | 2011-06-27 | 2011-06-28 |  | 39d | VadimS | 16h |
| 114 | 1.1.2.1.2 | Styles | 3d | 2011-06-15 | 2011-06-17 |  | 46d | VadimS | 24h |
| 115 | 1.1.2.1.3 | Maps | 1d | 2011-06-29 | 2011-06-29 |  | 38d | VadimS | 8h |
| 116 | 1.1.2.1.4 | Picture Views | 3d | 2011-06-20 | 2011-06-22 |  | 43d | VadimS | 24h |
| 117 | 1.1.2.1.5 | Site Layout | 2d | 2011-06-27 | 2011-06-28 |  | 39d | VadimS | 16h |
| 118 | 1.1.2.2 | **Functionality** | 5d? | 2011-06-15 | 2011-06-21 |  | 44d |  |  |
| 119 | 1.1.2.2.1 | Login/HTTPS | 1d? | 2011-06-15 | 2011-06-15 |  | 48d |  |  |
| 120 | 1.1.2.2.2 | Building(Complex) Lister | 1d | 2011-06-15 | 2011-06-15 |  | 48d |  |  |
| 121 | 1.1.2.2.3 | Building(Complex) Details | 1d | 2011-06-15 | 2011-06-15 |  | 48d |  |  |
| 122 | 1.1.2.2.4 | Unit Type (Floorplan) Details | 1d | 2011-06-15 | 2011-06-15 |  | 48d |  |  |
| 123 | 1.1.2.2.5 | Apply for Lease | 1d | 2011-06-15 | 2011-06-15 |  | 48d |  |  |
| 124 | 1.1.2.2.6 | Inqiuary | 1d | 2011-06-15 | 2011-06-15 |  | 48d |  |  |
| 125 | 1.1.2.2.7 | AVAILABILITY NOTIFICATION (Replaces Waiting List) | 1d | 2011-06-15 | 2011-06-15 |  | 48d |  |  |
| 126 | 1.1.2.2.8 | Reserve a unit | 3d | 2011-06-15 | 2011-06-17 |  | 46d |  |  |

Notes:
- 101: some payment types maybe disallowed during tenancy (for example, upon EFT bounce, no more EFT for this tenant)
- 102: If mandatory, need the proof of tenant insurance before move-in
- 103: Need proof that tenant set up a hydro account before move in
- 104: Tenant maybe required to inspect the unit pre-move in and sign the inspection form.
- 121: Functionality: / - Inquiary(Contact Us)
- 122: Functionality: / - Inquiary(Contact Us) / - Apply Now/Waiting List
- 125: Waiting list should notify sequentially, requires reservation of Apt, etc...
- 126: PT may reserve the available unit for various length of time for a fee

| ID | WBS | Task | Duration | Start | Finish | Total slack | Resources | Work |
| --- | --- | --- | --- | --- | --- | --- | --- | --- |
| 127 | 1.1.2.2.9 | **Current application status, progress, approval process** | 2d? | 2011-06-15 | 2011-06-16 | 47d |  |  |
| 128 | 1.1.2.2.9.1 | Status page | 1d | 2011-06-15 | 2011-06-15 | 48d |  |  |
| 129 | 1.1.2.2.9.2 | Show and sign the lease | 2d? | 2011-06-15 | 2011-06-16 | 47d |  |  |
| 130 | 1.1.2.2.9.3 | Confirm PAP(Preauthorised Payment Plan) method | 2d? | 2011-06-15 | 2011-06-16 | 47d |  |  |
| 131 | 1.1.2.2.9.4 | Schedule move-in date | 2d? | 2011-06-15 | 2011-06-16 | 47d |  |  |
| 132 | 1.1.2.2.9.5 | Confirming Tenant Insurance and Hydro | 2d? | 2011-06-15 | 2011-06-16 | 47d |  |  |
| 133 | 1.1.2.2.9.6 | UPSELL page for PV to make profit through alliances | 2d? | 2011-06-15 | 2011-06-16 | 47d |  |  |
| 134 | 1.1.2.2.10 | **Payments** | 2d? | 2011-06-15 | 2011-06-16 | 47d |  |  |
| 135 | 1.1.2.2.10.1 | **Setup Requiring Payment or Pay Now** | 2d? | 2011-06-15 | 2011-06-16 | 47d |  |  |
| 136 | 1.1.2.2.10.1.1 | Interact | 1d? | 2011-06-15 | 2011-06-15 | 48d |  |  |
| 137 | 1.1.2.2.10.1.2 | Bank | 1d? | 2011-06-15 | 2011-06-15 | 48d |  |  |
| 138 | 1.1.2.2.10.1.3 | Credit Card | 1d? | 2011-06-15 | 2011-06-15 | 48d |  |  |
| 139 | 1.1.2.2.10.1.4 | Current/Outstanding charges | 2d | 2011-06-15 | 2011-06-16 | 47d |  |  |
| 140 | 1.1.2.2.10.2 | Payment and Charge History | 1d? | 2011-06-15 | 2011-06-15 | 48d |  |  |
| 141 | 1.1.2.2.11 | Tenant Profile | 1d? | 2011-06-15 | 2011-06-15 | 48d |  |  |
| 142 | 1.1.2.2.12 | Lease App Status | 1d? | 2011-06-15 | 2011-06-15 | 48d |  |  |
| 143 | 1.1.2.2.13 | My Account | 5d | 2011-06-15 | 2011-06-21 | 44d |  |  |
| 144 | 1.1.2.2.14 | Static Content Presentation | 3d | 2011-06-15 | 2011-06-17 | 46d |  |  |
| 145 | 1.1.3 | **Lease Application Wizard** | 44d? | 2011-06-15 | 2011-08-15 | 5d |  | 184h |
| 146 | 1.1.3.1 | Mail Notifications and Invitations | 6d | 2011-08-08 | 2011-08-15 | 5d | VladS | 48h |
| 147 | 1.1.3.2 | Co-Signer Flow | 7d | 2011-06-15 | 2011-06-23 | 42d | VladS | 56h |
| 148 | 1.1.3.3 | Support IE7 | 7d | 2011-06-15 | 2011-06-23 | 42d | MichaelL | 56h |
| 149 | 1.1.3.4 | Images for Property | 1d? | 2011-06-15 | 2011-06-15 | 48d |  |  |
| 150 | 1.1.3.5 | Redo Document Upload | 1d? | 2011-06-15 | 2011-06-15 | 48d |  |  |
| 151 | 1.1.3.6 | Facility to describe uploaded document | 3d | 2011-07-11 | 2011-07-13 | 28d | VladL | 24h |
| 152 | 1.1.3.7 | Implement MOCK stuff | 1d? | 2011-06-15 | 2011-06-15 | 48d |  |  |
| 153 | 1.1.3.8 | Co-applicant flow | 1d? | 2011-06-15 | 2011-06-15 | 48d |  |  |
| 154 | 1.1.3.9 | Return to Status page on the End | 1d? | 2011-06-15 | 2011-06-15 | 48d |  |  |
| 155 | 1.2 | Corporate Admin | 1d? | 2011-06-15 | 2011-06-15 | 48d |  |  |

Notes:
- 127: http://propertyvista.jira.com/wiki/display/VISTA/PT+Approval+Process
- 133: Cable / Internet / Phone / Cell Phone / Tenant Insurance / Car Insurance
- 151: Ability to define predefined document type that is aligned with a policy and provide a note for it in a case of other

| ID | WBS | Task | Duration | Start | Finish | Total slack | Resources | Work |
| --- | --- | --- | --- | --- | --- | --- | --- | --- |
| 156 | 1.3 | **Server** | 45d? | 2011-06-15 | 2011-08-16 | 4d |  | 72h |
| 157 | 1.3.1 | CRUD Functionality Services | 7d | 2011-06-27 | 2011-07-05 | 34d | VladS | 56h |
| 158 | 1.3.2 | DNS selector for PM | 2d | 2011-08-15 | 2011-08-16 | 4d | VladS | 16h |
| 159 | 1.3.3 | Managing marketing sources | 1d? | 2011-06-15 | 2011-06-15 | 48d |  |  |
| 160 | 1.3.4 | **Billing** | 1d? | 2011-06-15 | 2011-06-15 | 48d |  |  |
| 161 | 1.3.4.1 | Domain | 1d? | 2011-06-15 | 2011-06-15 | 48d |  |  |
| 162 | 1.3.4.2 | Transactions | 1d? | 2011-06-15 | 2011-06-15 | 48d |  |  |
| 163 | 1.3.4.3 | Reconciliation | 1d? | 2011-06-15 | 2011-06-15 | 48d |  |  |
| 164 | 1.4 | **Interfaces** | 36d? | 2011-06-15 | 2011-08-03 | 13d |  | 56h |
| 165 | 1.4.1 | Eqifax | 7d | 2011-07-26 | 2011-08-03 | 13d | VladS | 56h |
| 166 | 1.4.2 | BMO | 1d? | 2011-06-15 | 2011-06-15 | 48d |  |  |
| 167 | 1.4.3 | Callfire | 1d? | 2011-06-15 | 2011-06-15 | 48d |  |  |
| 168 | 1.4.4 | Caledon interface | 1d? | 2011-06-15 | 2011-06-15 | 48d |  |  |
| 169 | 1.4.5 | Yardi payment gateway | 14d | 2011-06-15 | 2011-07-04 | 35d |  |  |
| 170 | 1.4.6 | Export/Import data from/to Yardi | 1d? | 2011-06-15 | 2011-06-15 | 48d |  |  |
| 171 | 1.5 | Dumb Pipe | 1d? | 2011-06-15 | 2011-06-15 | 48d |  |  |

Notes:
- 159: Editing/publishing ads
